# 项目准备

How a schedule from a web Gantt chart changed from version to version. A marks actual dates.

## Version 1 (saved 2025-05-20)

| ID | Task | Duration | Start | Finish |
| --- | --- | --- | --- | --- |
| 2 | 项目团队组建 | 1d | 2025-05-21 | 2025-05-21 |

## Version 2 (saved 2025-05-20)

Last finish 2025-05-21 → 2025-06-24 (+34d).

Added:

| ID | Task | Duration | Start | Finish |
| --- | --- | --- | --- | --- |
| 2 | **项目准备** | 2d | 2025-05-20 | 2025-05-21 |
| 4 | **开发需求沟通** | 2d | 2025-05-22 | 2025-05-23 |
| 5 | **人力云-资产云联动需求** | 1d | 2025-05-22 | 2025-05-22 |
| 6 | 现有资产管理系统和人力相关流程梳理 | 1d | 2025-05-22 | 2025-05-22 |
| 7 | 资产相关人员信息变动范围确认 | 1d | 2025-05-22 | 2025-05-22 |
| 8 | 流程转功能需求确认 | 1d | 2025-05-22 | 2025-05-22 |
| 9 | **资产云全员自动授予/撤销权限需求** | 1d | 2025-05-23 | 2025-05-23 |
| 10 | 授权范围和边界确认 | 1d | 2025-05-23 | 2025-05-23 |
| 11 | 开发需求交接和制定开发计划 | 2d | 2025-05-22 | 2025-05-23 |
| 12 | **资产数据标准确定** | 10d | 2025-05-26 | 2025-06-06 |
| 13 | **静态数据标准** | 4d | 2025-05-26 | 2025-05-29 |
| 14 | 资产实物分类标准 | 1d | 2025-05-26 | 2025-05-26 |
| 15 | 物料分类标准 | 1d | 2025-05-27 | 2025-05-27 |
| 16 | 周转材分类标准 | 1d | 2025-05-28 | 2025-05-28 |
| 17 | 库存和仓库标准 | 1d | 2025-05-29 | 2025-05-29 |
| 18 | **资产梳理与导入表单整理** | 6d | 2025-05-30 | 2025-06-06 |
| 19 | 办公资产梳理 | 6d | 2025-05-30 | 2025-06-06 |
| 20 | 数据中心资产梳理 | 6d | 2025-05-30 | 2025-06-06 |
| 21 | **标准功能上线** | 8d | 2025-06-09 | 2025-06-18 |
| 22 | 环境准备 | 1d | 2025-06-09 | 2025-06-09 |
| 23 | 正式环境静态数据导入 | 2d | 2025-06-10 | 2025-06-11 |
| 24 | 资产数据导入 | 3d | 2025-06-11 | 2025-06-13 |
| 25 | 功能验证 | 1d | 2025-06-13 | 2025-06-13 |
| 26 | 标准功能全面推广 | 1d | 2025-06-16 | 2025-06-16 |
| 27 | **数据验证** | 5d | 2025-06-16 | 2025-06-20 |
| 28 | 全员资产盘点 | 5d | 2025-06-16 | 2025-06-20 |
| 29 | **项目总结归档** | 2d | 2025-06-23 | 2025-06-24 |
| 30 | 整理实施文档 | 1d | 2025-06-23 | 2025-06-23 |
| 31 | 资产云使用指导 | 1d | 2025-06-24 | 2025-06-24 |

Changed:

| ID | Task | Start | Duration |
| --- | --- | --- | --- |
| 3 | 项目团队组建 | 2025-05-21 → 2025-05-20 (-1d) | 1d → 2d |

## Version 3 (saved 2025-05-27)

Last finish stays 2025-06-24. Complete tasks 0 → 4.

Added:

| ID | Task | Duration | Start | Finish |
| --- | --- | --- | --- | --- |
| 14 | 权限角色设计 | 1d | 2025-05-26 | 2025-05-26 |
| 19 | 审批流程设计 | 1d | 2025-05-30 | 2025-05-30 |

Changed:

| ID | Task | Start | Finish | Duration | Complete |
| --- | --- | --- | --- | --- | --- |
| 4 | **开发需求沟通** |  |  |  | 0% → 43% |
| 5 | **人力云-资产云联动需求** |  |  |  | 0% → 67% |
| 6 | 现有资产管理系统和人力相关流程梳理 |  |  |  | 0% → 100% |
| 7 | 资产相关人员信息变动范围确认 |  |  |  | 0% → 100% |
| 9 | **资产云全员自动授予/撤销权限需求** |  |  |  | 0% → 60% |
| 10 | 授权范围和边界确认 |  |  |  | 0% → 60% |
| 12 | **资产数据标准确定** |  |  |  | 0% → 23% |
| 13 | **静态数据标准** |  | 2025-05-29 → 2025-05-30 (+1d) | 4d → 5d | 0% → 33% |
| 15 | 资产实物分类标准 |  |  |  | 0% → 100% |
| 16 | 物料分类标准 |  |  |  | 0% → 100% |
| 20 | **资产梳理与导入表单整理** | 2025-05-30 → 2025-06-03 (+4d) |  | 6d → 4d | 0% → 15% |
| 21 | 办公资产梳理 | 2025-05-30 → 2025-06-03 (+4d) |  | 6d → 4d |  |
| 22 | 数据中心资产梳理 | 2025-05-30 → 2025-06-03 (+4d) |  | 6d → 4d | 0% → 30% |

## Version 4 (saved 2025-06-05)

Last finish stays 2025-06-24. Complete tasks 4 → 7.

Changed:

| ID | Task | Complete |
| --- | --- | --- |
| 12 | **资产数据标准确定** | 23% → 44% |
| 13 | **静态数据标准** | 33% → 83% |
| 17 | 周转材分类标准 | 0% → 100% |
| 18 | 库存和仓库标准 | 0% → 100% |
| 19 | 审批流程设计 | 0% → 100% |

## Version 5 (saved 2025-06-06)

Last finish stays 2025-06-24. Complete tasks 7 → 10.

Changed:

| ID | Task | Start | Finish | Duration | Complete |
| --- | --- | --- | --- | --- | --- |
| 4 | **开发需求沟通** |  |  |  | 43% → 85% |
| 5 | **人力云-资产云联动需求** |  |  |  | 67% → 70% |
| 8 | 流程转功能需求确认 |  |  |  | 0% → 10% |
| 9 | **资产云全员自动授予/撤销权限需求** |  |  |  | 60% → 100% |
| 10 | 授权范围和边界确认 |  |  |  | 60% → 100% |
| 11 | 开发需求交接和制定开发计划 |  |  |  | 0% → 100% |
| 12 | **资产数据标准确定** |  | 2025-06-06 → 2025-06-11 (+5d) | 10d → 13d | 44% → 42% |
| 13 | **静态数据标准** |  |  |  | 83% → 85% |
| 14 | 权限角色设计 |  |  |  | 0% → 10% |
| 20 | **资产梳理与导入表单整理** |  | 2025-06-06 → 2025-06-11 (+5d) | 4d → 7d | 15% → 19% |
| 21 | 办公资产梳理 | 2025-06-03 → 2025-06-09 (+6d) | 2025-06-06 → 2025-06-11 (+5d) | 4d → 3d |  |
| 22 | 数据中心资产梳理 |  | 2025-06-06 → 2025-06-11 (+5d) | 4d → 7d |  |
| 23 | **标准功能上线** | 2025-06-09 → 2025-06-11 (+2d) | 2025-06-18 → 2025-06-16 (-2d) | 8d → 4d | 0% → 47% |
| 24 | 环境准备 | 2025-06-09 → 2025-06-11 (+2d) | 2025-06-09 → 2025-06-12 (+3d) | 1d → 2d | 0% → 100% |
| 25 | 正式环境静态数据导入 | 2025-06-10 → 2025-06-11 (+1d) | 2025-06-11 → 2025-06-12 (+1d) |  | 0% → 90% |
| 26 | 资产数据导入 |  |  |  | 0% → 15% |

## Version 6 (saved 2025-06-10)

Last finish stays 2025-06-24.

Changed:

| ID | Task | Start | Finish | Duration | Complete |
| --- | --- | --- | --- | --- | --- |
| 12 | **资产数据标准确定** |  | 2025-06-11 → 2025-06-16 (+5d) | 13d → 16d | 42% → 43% |
| 20 | **资产梳理与导入表单整理** |  | 2025-06-11 → 2025-06-16 (+5d) | 7d → 10d | 19% → 23% |
| 22 | 数据中心资产梳理 |  | 2025-06-11 → 2025-06-16 (+5d) | 7d → 10d |  |
| 23 | **标准功能上线** | 2025-06-11 → 2025-06-13 (+2d) | 2025-06-16 → 2025-06-18 (+2d) |  |  |
| 24 | 环境准备 | 2025-06-11 → 2025-06-16 (+5d) | 2025-06-12 → 2025-06-17 (+5d) |  |  |
| 25 | 正式环境静态数据导入 | 2025-06-11 → 2025-06-16 (+5d) | 2025-06-12 → 2025-06-17 (+5d) |  |  |
| 26 | 资产数据导入 | 2025-06-11 → 2025-06-16 (+5d) | 2025-06-13 → 2025-06-18 (+5d) |  |  |

## Version 7 (saved 2025-07-01)

Last finish 2025-06-24 → 2025-07-11 (+17d).

Added:

| ID | Task | Duration | Start | Finish |
| --- | --- | --- | --- | --- |
| 28 | 全员资产应用功能验证及问题修复 | 10d | 2025-06-13 | 2025-06-26 |
| 29 | 管理功能验证及问题修复 | 12d | 2025-06-13 | 2025-06-30 |
| 30 | 资产数据验证 | 4d | 2025-07-01 | 2025-07-04 |
| 32 | **资产验证** | 5d | 2025-07-07 | 2025-07-11 |

Removed: 29 数据验证

Changed:

| ID | Task | Start | Finish | Duration | Complete |
| --- | --- | --- | --- | --- | --- |
| 23 | **标准功能上线** |  | 2025-06-18 → 2025-07-07 (+19d) | 4d → 17d | 47% → 13% |
| 26 | 资产数据导入 |  | 2025-06-18 → 2025-06-25 (+7d) | 3d → 8d |  |
| 27 | **功能验证** |  | 2025-06-13 → 2025-07-04 (+21d) | 1d → 16d |  |
| 31 | 标准功能全面推广 | 2025-06-16 → 2025-07-07 (+21d) | 2025-06-16 → 2025-07-07 (+21d) |  |  |
| 33 | 全员资产盘点 | 2025-06-16 → 2025-07-07 (+21d) | 2025-06-20 → 2025-07-11 (+21d) |  |  |
| 34 | **项目总结归档** | 2025-06-23 → 2025-07-01 (+8d) | 2025-06-24 → 2025-07-04 (+10d) | 2d → 4d |  |
| 35 | 整理实施文档 | 2025-06-23 → 2025-07-01 (+8d) | 2025-06-23 → 2025-07-04 (+11d) | 1d → 4d |  |
| 36 | 资产云使用指导 | 2025-06-24 → 2025-07-01 (+7d) | 2025-06-24 → 2025-07-04 (+10d) | 1d → 4d |  |
