# 集团（股份、政务、金融、江分）资产云上线任务

How a schedule from a web Gantt chart changed from version to version. A marks actual dates.

## Version 1 (saved 2025-07-22)

| ID | WBS | Task | Duration | Start | Finish | Complete |
| --- | --- | --- | --- | --- | --- | --- |
| 2 | 1 | **UI模板差异化配置** | 1d | 2025-07-22 | 2025-07-22 |  |
| 3 |  | 政务 | 1d | 2025-07-22 | 2025-07-22 |  |
| 4 |  | 金融 | 1d | 2025-07-22 | 2025-07-22 |  |
| 5 |  | 股份 | 1d | 2025-07-22 | 2025-07-22 |  |
| 6 | 2 | **工作流配置** | 1d | 2025-07-23 | 2025-07-23 |  |
| 7 |  | 政务 | 1d | 2025-07-23 | 2025-07-23 |  |
| 8 |  | 金融 | 1d | 2025-07-23 | 2025-07-23 |  |
| 9 |  | 股份（除江分） | 1d | 2025-07-23 | 2025-07-23 |  |
| 10 |  | 江西分公司 | 1d | 2025-07-23 | 2025-07-23 |  |
| 11 | 3 | **407资产数据梳理及导入测试** | 1d | 2025-07-24 | 2025-07-24 |  |
| 12 |  | 政务 | 1d | 2025-07-24 | 2025-07-24 |  |
| 13 |  | 金融 | 1d | 2025-07-24 | 2025-07-24 |  |
| 14 | 3.3 | **股份（除江西分）** | 1d | 2025-07-24 | 2025-07-24 |  |
| 15 |  | 数据中心 | 1d | 2025-07-24 | 2025-07-24 |  |
| 16 |  | 办公 | 1d | 2025-07-24 | 2025-07-24 |  |
| 17 |  | 江西分公司 | 1d | 2025-07-24 | 2025-07-24 |  |
| 18 | 4 | **资产云推送使用信息变动到NC65程序开发** | 14d | 2025-07-18 | 2025-08-06 | 7% |
| 19 |  | 接口权限开放、表头数据开放 | 1d | 2025-07-18 | 2025-07-18 | 100% |
| 20 |  | 程序开发 | 14d | 2025-07-18 | 2025-08-06 |  |
| 21 |  | 各机构资产云全员应用授权程序开发 | 1d | 2025-07-18 | 2025-07-18 |  |
| 22 | 6 | **全员资产应用PC端和移动端发单测试** | 1d | 2025-07-18 | 2025-07-18 |  |
| 23 |  | 政务 | 1d | 2025-07-18 | 2025-07-18 |  |
| 24 |  | 金融 | 1d | 2025-07-18 | 2025-07-18 |  |
| 25 |  | 江西分公司 | 1d | 2025-07-18 | 2025-07-18 |  |
| 26 |  | 股份（除江分） | 1d | 2025-07-18 | 2025-07-18 |  |

## Version 2 (saved 2025-07-22)

Last finish 2025-08-06 → 2025-08-04 (-2d).

Added:

| ID | Task | Duration | Start | Finish |
| --- | --- | --- | --- | --- |
| 14 | **股份（除江分）** | 1d | 2025-07-24 | 2025-07-24 |
| 27 | 数据中心 | 1d | 2025-07-18 | 2025-07-18 |
| 28 | 办公 | 1d | 2025-07-18 | 2025-07-18 |
| 29 | **资产云上线** | 2d | 2025-08-01 | 2025-08-02 |
| 30 | 集团发文公告（申请停机窗口） | 1d | 2025-08-01 | 2025-08-01 |
| 31 | “设备管理系统”入口 | 1d | 2025-08-01 | 2025-08-01 |
| 32 | 处理存量单据 | 1d | 2025-08-01 | 2025-08-01 |
| 33 | 设置407全员只读，回收权限 | 1d | 2025-08-01 | 2025-08-01 |
| 34 | 执行407推NC程序 | 1d | 2025-08-01 | 2025-08-01 |
| 35 | **资产数据导出、梳理、导入** | 1d | 2025-08-02 | 2025-08-02 |
| 36 | 资产云数据清理 | 1d | 2025-08-02 | 2025-08-02 |
| 37 | **股份（除江分）** | 1d | 2025-08-02 | 2025-08-02 |
| 38 | 数据中心 | 1d | 2025-08-02 | 2025-08-02 |
| 39 | 办公 | 1d | 2025-08-02 | 2025-08-02 |
| 40 | 政务 | 1d | 2025-08-02 | 2025-08-02 |
| 41 | 金融 | 1d | 2025-08-02 | 2025-08-02 |
| 42 | 江西分公司 | 1d | 2025-08-02 | 2025-08-02 |
| 43 | 发单验证 | 1d | 2025-08-02 | 2025-08-02 |
| 44 | 资产使用迁移公告及邮件 | 1d | 2025-08-04 | 2025-08-04 |

Removed: 14 股份（除江西分）

Changed:

| ID | Task | Finish |
| --- | --- | --- |
| 18 | **资产云推送使用信息变动到NC65程序开发** | 2025-08-06 → 2025-07-31 (-6d) |
| 20 | 程序开发 | 2025-08-06 → 2025-07-31 (-6d) |

## Version 3 (saved 2025-07-23)

Last finish stays 2025-08-04. Complete tasks 1 → 6.

Added:

| ID | Task | Duration | Start | Finish |
| --- | --- | --- | --- | --- |
| 14 | 测试 | 10d | 2025-07-22 | 2025-07-31 |
| 16 | **407资产数据梳理** | 2d | 2025-07-24 | 2025-07-25 |
| 23 | 数据导入测试 | 1d | 2025-07-26 | 2025-07-26 |
| 38 | **资产数据初始化** | 1d | 2025-08-02 | 2025-08-02 |
| 39 | **股份（除江分）梳理导入** | 1d | 2025-08-02 | 2025-08-02 |
| 40 | 数据中心梳理导入 | 1d | 2025-08-02 | 2025-08-02 |
| 41 | 办公梳理导入 | 1d | 2025-08-02 | 2025-08-02 |
| 42 | 政务梳理导入 | 1d | 2025-08-02 | 2025-08-02 |
| 43 | 金融梳理导入 | 1d | 2025-08-02 | 2025-08-02 |
| 44 | 江西分公司梳理导入 | 1d | 2025-08-02 | 2025-08-02 |

Removed: 11 407资产数据梳理及导入测试; 35 资产数据导出、梳理、导入; 37 股份（除江分）; 38 数据中心; 39 办公; 40 政务; 41 金融; 42 江西分公司

Changed:

| ID | Task | Start | Finish | Duration | Complete |
| --- | --- | --- | --- | --- | --- |
| 2 | **UI模板差异化配置** |  |  |  | 0% → 67% |
| 3 | 政务 |  |  |  | 0% → 100% |
| 5 | 股份 |  |  |  | 0% → 100% |
| 6 | **工作流配置** |  |  |  | 0% → 38% |
| 9 | 股份（除江分） |  |  |  | 0% → 100% |
| 10 | 江西分公司 |  |  |  | 0% → 50% |
| 11 | **资产云推送使用信息变动到NC65程序开发** |  |  |  | 7% → 69% |
| 13 | 程序开发 |  | 2025-07-31 → 2025-07-22 (-9d) | 14d → 5d | 0% → 100% |
| 15 | 各机构资产云全员应用授权程序开发 |  | 2025-07-18 → 2025-07-22 (+4d) | 1d → 5d | 0% → 100% |
| 17 | 政务 |  | 2025-07-24 → 2025-07-25 (+1d) | 1d → 2d |  |
| 18 | 金融 |  | 2025-07-24 → 2025-07-25 (+1d) | 1d → 2d |  |
| 19 | **股份（除江分）** |  | 2025-07-24 → 2025-07-25 (+1d) | 1d → 2d |  |
| 20 | 数据中心 |  | 2025-07-24 → 2025-07-25 (+1d) | 1d → 2d |  |
| 21 | 办公 |  | 2025-07-24 → 2025-07-25 (+1d) | 1d → 2d |  |
| 22 | 江西分公司 |  | 2025-07-24 → 2025-07-25 (+1d) | 1d → 2d |  |
| 24 | **全员资产应用PC端和移动端发单测试** | 2025-07-18 → 2025-07-26 (+8d) | 2025-07-18 → 2025-07-31 (+13d) | 1d → 6d |  |
| 25 | 政务 | 2025-07-18 → 2025-07-26 (+8d) | 2025-07-18 → 2025-07-31 (+13d) | 1d → 6d |  |
| 26 | 金融 | 2025-07-18 → 2025-07-26 (+8d) | 2025-07-18 → 2025-07-31 (+13d) | 1d → 6d |  |
| 27 | 江西分公司 | 2025-07-18 → 2025-07-26 (+8d) | 2025-07-18 → 2025-07-31 (+13d) | 1d → 6d |  |
| 28 | **股份（除江分）** | 2025-07-18 → 2025-07-26 (+8d) | 2025-07-18 → 2025-07-31 (+13d) | 1d → 6d |  |
| 29 | 数据中心 | 2025-07-18 → 2025-07-26 (+8d) | 2025-07-18 → 2025-07-31 (+13d) | 1d → 6d |  |
| 30 | 办公 | 2025-07-18 → 2025-07-26 (+8d) | 2025-07-18 → 2025-07-31 (+13d) | 1d → 6d |  |
| 31 | **资产云上线** |  | 2025-08-02 → 2025-08-04 (+2d) | 2d → 4d |  |
| 36 | 执行407推NC程序 | 2025-08-01 → 2025-08-02 (+1d) | 2025-08-01 → 2025-08-02 (+1d) |  |  |

## Version 4 (saved 2025-07-24)

Last finish stays 2025-08-04. Complete tasks 6 → 7.

Changed:

| ID | Task | Complete |
| --- | --- | --- |
| 6 | **工作流配置** | 38% → 62% |
| 7 | 政务 | 0% → 100% |
| 17 | 政务 | 0% → 1% |

## Version 5 (saved 2025-07-25)

Last finish 2025-08-04 → 2025-08-02 (-2d). Complete tasks 7 → 10.

Added:

| ID | Task | Duration | Start | Finish |
| --- | --- | --- | --- | --- |
| 16 | **407资产数据梳理、数据导入** | 5d | 2025-07-24 | 2025-07-28 |
| 45 | 资产云权限回收 | 1d | 2025-08-02 | 2025-08-02 |

Removed: 16 407资产数据梳理; 23 数据导入测试

Changed:

| ID | Task | Start | Finish | Duration | Complete |
| --- | --- | --- | --- | --- | --- |
| 2 | **UI模板差异化配置** |  |  |  | 67% → 100% |
| 4 | 金融 |  |  |  | 0% → 100% |
| 6 | **工作流配置** |  |  |  | 62% → 100% |
| 8 | 金融 |  |  |  | 0% → 100% |
| 10 | 江西分公司 |  |  |  | 50% → 100% |
| 11 | **资产云推送使用信息变动到NC65程序开发** |  |  |  | 69% → 94% |
| 14 | 测试 |  |  |  | 50% → 90% |
| 17 | 政务 |  | 2025-07-25 → 2025-07-28 (+3d) | 2d → 5d | 1% → 40% |
| 18 | 金融 |  | 2025-07-25 → 2025-07-28 (+3d) | 2d → 5d |  |
| 19 | **股份（除江分）** |  | 2025-07-25 → 2025-07-28 (+3d) | 2d → 5d | 0% → 30% |
| 20 | 数据中心 |  | 2025-07-25 → 2025-07-28 (+3d) | 2d → 5d | 0% → 60% |
| 21 | 办公 |  | 2025-07-25 → 2025-07-28 (+3d) | 2d → 5d |  |
| 22 | 江西分公司 |  | 2025-07-25 → 2025-07-28 (+3d) | 2d → 5d | 0% → 40% |
| 23 | **全员资产应用PC端和移动端发单测试** | 2025-07-26 → 2025-07-28 (+2d) |  | 6d → 4d | 0% → 2% |
| 24 | 政务 | 2025-07-26 → 2025-07-28 (+2d) |  | 6d → 4d | 0% → 10% |
| 25 | 金融 | 2025-07-26 → 2025-07-28 (+2d) |  | 6d → 4d |  |
| 26 | 江西分公司 | 2025-07-26 → 2025-07-28 (+2d) |  | 6d → 4d |  |
| 27 | **股份（除江分）** | 2025-07-26 → 2025-07-28 (+2d) |  | 6d → 4d |  |
| 28 | 数据中心 | 2025-07-26 → 2025-07-28 (+2d) |  | 6d → 4d |  |
| 29 | 办公 | 2025-07-26 → 2025-07-28 (+2d) |  | 6d → 4d |  |
| 30 | 执行407推NC程序 | 2025-08-02 → 2025-07-31 (-2d) | 2025-08-02 → 2025-07-31 (-2d) |  |  |
| 31 | **资产云上线** | 2025-08-01 → 2025-07-31 (-1d) | 2025-08-04 → 2025-08-02 (-2d) | 4d → 3d |  |
| 36 | 资产云数据清理 | 2025-08-02 → 2025-08-01 (-1d) | 2025-08-02 → 2025-08-01 (-1d) |  |  |
| 46 | 资产使用迁移公告及邮件 | 2025-08-04 → 2025-08-02 (-2d) | 2025-08-04 → 2025-08-02 (-2d) |  |  |

## Version 6 (saved 2025-08-01)

Last finish stays 2025-08-02. Complete tasks 10 → 16.

Changed:

| ID | Task | Complete |
| --- | --- | --- |
| 16 | **407资产数据梳理、数据导入** | 28% → 60% |
| 17 | 政务 | 40% → 100% |
| 19 | **股份（除江分）** | 30% → 50% |
| 20 | 数据中心 | 60% → 100% |
| 22 | 江西分公司 | 40% → 100% |
| 23 | **全员资产应用PC端和移动端发单测试** | 2% → 96% |
| 24 | 政务 | 10% → 100% |
| 25 | 金融 | 0% → 90% |
| 26 | 江西分公司 | 0% → 100% |
| 27 | **股份（除江分）** | 0% → 95% |
| 28 | 数据中心 | 0% → 100% |
| 29 | 办公 | 0% → 90% |
